# Stargazer

Schedule from MS Project, 2010-01-06 to 2010-04-07, 4 hours a day, A marks actual dates.
Okanagan College

## Calendars

- Standard: Mon 14:00-16:30; Tue off; Wed 14:30-16:30; Thu 14:30-18:30; Fri-Sun off. Exceptions (off unless hours are given): 2010-04-06 08:00-12:00, 13:00-17:00.

## Resources

| Resource |
| --- |
| Robert |
| Rob |

## Schedule

| ID | WBS | Task | Type | Duration | Start | Finish | Predecessors | Complete | Remaining | Total slack | Free slack | Constraint | Resources | Work | Actual work | Text1 |
| --- | --- | --- | --- | --- | --- | --- | --- | --- | --- | --- | --- | --- | --- | --- | --- | --- |
| 1 | 1 | **Iteration 5: Release #4: Automated Scheduling and Telescope Positioning** |  | 5.25d | 2010-01-06 14:30 A | 2010-01-21 16:30 |  | 65% | 1.83d | 12.25d | 0d |  |  | 31.75h | 19.15h | 16 |
| 2 | 1.1 | **Web system** |  | 4.75d | 2010-01-07 14:30 A | 2010-01-21 16:30 |  | 79% | 1d | 12.25d | 0d |  |  | 14.25h | 11.25h | 16 |
| 3 | 1.1.1 | Add new online help documentation to website |  | 3h | 2010-01-11 14:00 A | 2010-01-13 15:00 A |  | 100% |  |  |  | start no earlier than 2010-01-11 08:00 | Robert | 3h | 3h | 12 |
| 4 | 1.1.2 | Fix CSS with mobile devices |  | 15min | 2010-01-07 14:30 A | 2010-01-07 14:45 A |  | 100% |  |  |  | start no earlier than 2010-01-07 08:00 | Rob | 0.25h | 0.25h |  |
| 5 | 1.1.3 | Minor refactoring |  | 1.5h | 2010-01-07 14:30 A | 2010-01-07 16:00 A |  | 100% |  |  |  | start no earlier than 2010-01-07 08:00 | Rob | 1.5h | 1.5h |  |
| 6 | 1.1.4 | Research Rails plugin to handle scheduling |  | 2h | 2010-01-11 14:00 A | 2010-01-11 16:00 A |  | 100% |  |  |  | start no earlier than 2010-01-11 08:00 | Rob | 2h | 2h |  |
| 7 | 1.1.5 | Download and install Oracle 10g XE on telescope server |  | 1.5h | 2010-01-14 14:30 A | 2010-01-14 16:00 A | 6 | 100% |  |  |  | start no earlier than 2010-01-14 08:00 | Rob | 1.5h | 1.5h |  |
| 8 | 1.1.6 | Install Oracle client on web server |  | 1h | 2010-01-21 14:30 | 2010-01-21 15:30 |  |  |  | 12.5d |  | start no earlier than 2010-01-21 08:00 | Rob | 1h |  |  |
| 9 | 1.1.7 | Configure Rails environment to now use the Oracle 10g XE database |  | 1h | 2010-01-14 16:00 A | 2010-01-14 17:00 A | 7 | 100% |  |  |  | start no earlier than 2010-01-14 08:00 | Rob | 1h | 1h |  |
| 10 | 1.1.8 | Create triggers/batch file to run application |  | 2h | 2010-01-21 14:30 | 2010-01-21 16:30 | 11 |  |  | 12.25d |  | start no earlier than 2010-01-21 08:00 | Rob | 2h |  |  |
| 11 | 1.1.9 | Test connections and scheduling jobs |  | 2h | 2010-01-18 14:00 A | 2010-01-18 16:00 A | 9 | 100% |  |  |  | start no earlier than 2010-01-18 08:00 | Rob | 2h | 2h |  |
| 12 | 1.2 | **Telescope-controlling application** |  | 3.38d | 2010-01-06 14:30 A | 2010-01-14 17:30 |  | 60% | 1.35d | 14.12d | 1.88d |  |  | 5h | 3h | 16 |
| 13 | 1.2.1 | Allow for parking the telescope |  | 1h | 2010-01-14 14:30 A | 2010-01-14 15:30 A |  | 100% |  |  |  | start no earlier than 2010-01-14 08:00 | Robert | 1h | 1h |  |
| 14 | 1.2.2 | Allow for telescope movement ability from entered celestial coordinates |  | 2h | 2010-01-14 15:30 A | 2010-01-14 17:30 A | 13 | 100% |  |  |  | start no earlier than 2010-01-14 08:00 | Robert | 2h | 2h |  |
| 15 | 1.2.3 | Test driver for all commands |  | 2h | 2010-01-06 14:30 | 2010-01-06 16:30 |  |  |  | 17d |  |  | Robert | 2h |  |  |
| 16 | 1.3 | **Documentation** |  | 3.88d | 2010-01-06 14:30 A | 2010-01-18 15:00 |  | 43% | 2.22d | 13.62d | 1.38d |  |  | 12.5h | 4.9h | 16 |
| 17 | 1.3.1 | Documentation updates |  | 5h | 2010-01-06 14:30 A | 2010-01-07 17:30 |  | 34% | 3.3h | 16.25d | 7.75d |  | Rob; Robert | 10h | 3.4h | 20 |
| 18 | 1.3.2 | Metrics gathering |  | 1.5h | 2010-01-06 14:30 A | 2010-01-06 16:00 A |  | 100% |  |  |  |  | Rob | 1.5h | 1.5h |  |
| 19 | 1.3.3 | Draft acceptance test |  | 1h | 2010-01-18 14:00 | 2010-01-18 15:00 |  |  |  | 13.62d |  | start no earlier than 2010-01-18 08:00 | Rob | 1h |  |  |
| 20 | 1.4 | Release #4: Automated Scheduling and Telescope Positioning | milestone | 0d | 2010-01-21 16:30 | 2010-01-21 16:30 | 2, 12, 16 |  |  | 12.25d |  | start no earlier than 2010-01-21 08:00 | Rob; Robert |  |  |  |
| 22 | 2 | **Iteration 6: Release #5: Automated Image Gathering** |  | 4.5d | 2010-01-21 16:30 | 2010-02-04 17:30 | 1 |  |  | 11.75d | 0d |  |  | 71h |  | 16 |
| 23 | 2.1 | **Web system** |  | 1.75d | 2010-01-21 16:30 | 2010-01-28 15:00 |  |  |  | 14.5d | 2.75d |  |  | 18.5h |  | 16 |
| 24 | 2.1.1 | Add scheduled job for parking telescope |  | 2.5h | 2010-01-21 16:30 | 2010-01-25 14:30 | 13 |  |  | 15.62d |  |  | Rob | 2.5h |  | 10 |
| 25 | 2.1.2 | Integrate libraries (which have celestial objects of interest) to web site |  | 5h | 2010-01-25 14:00 | 2010-01-28 15:00 |  |  |  | 14.5d |  | start no earlier than 2010-01-25 08:00 | Robert; Rob | 10h |  | 20 |
| 26 | 2.1.3 | Add pagination to tables (e.g. schedule log table) |  | 4h | 2010-01-25 14:00 | 2010-01-27 16:00 |  |  |  | 14.75d |  | start no earlier than 2010-01-25 08:00 | Rob | 4h |  | 16 |
| 27 | 2.1.4 | Add image copying to batch file/job scheduling |  | 2h | 2010-01-21 16:30 | 2010-01-21 18:30 |  |  |  | 15.75d |  |  | Rob | 2h |  |  |

| ID | WBS | Task | Type | Duration | Start | Finish | Predecessors | Total slack | Free slack | Constraint | Resources | Work | Text1 |
| --- | --- | --- | --- | --- | --- | --- | --- | --- | --- | --- | --- | --- | --- |
| 28 | 2.2 | **Telescope-controlling application** |  | 1.75d | 2010-01-21 16:30 | 2010-01-28 15:00 |  | 14.5d | 2.75d |  |  | 5h | 16 |
| 29 | 2.2.1 | Create test program to handle image taking with specific parameters |  | 4.5h | 2010-01-21 16:30 | 2010-01-25 16:30 |  | 15.12d |  |  | Robert | 4.5h | 18 |
| 30 | 2.2.2 | Integrate camera to telescope-controlling application |  | 0.5h | 2010-01-28 14:30 | 2010-01-28 15:00 |  | 14.5d | 2.75d | start no earlier than 2010-01-28 08:00 | Robert | 0.5h |  |
| 31 | 2.3 | **Documentation** |  | 4.5d | 2010-01-21 16:30 | 2010-02-04 17:30 |  | 11.75d | 0d |  |  | 47.5h | 16 |
| 32 | 2.3.1 | Update documentation |  | 16h | 2010-01-21 16:30 | 2010-02-04 15:30 |  | 12.25d |  |  | Rob; Robert | 32h | 64 |
| 33 | 2.3.2 | More metrics gathering |  | 2h | 2010-01-21 16:30 | 2010-01-21 18:30 | 18 | 15.75d |  |  | Robert | 2h |  |
| 34 | 2.3.3 | Create unit tests for telescope-controlling application |  | 2.5h | 2010-02-04 14:30 | 2010-02-04 17:00 | 12 | 11.88d |  | start no earlier than 2010-02-04 08:00 | Robert | 2.5h | 10 |
| 35 | 2.3.4 | Create class diagram for telescope-controlling application |  | 1h | 2010-02-04 14:30 | 2010-02-04 15:30 | 17 | 11.75d | 0d | start no earlier than 2010-02-04 08:00 | Robert | 1h |  |
| 36 | 2.3.5 | Create sequence diagrams for telescope-controlling application |  | 2h | 2010-02-04 15:30 | 2010-02-04 17:30 | 35 | 11.75d |  | start no earlier than 2010-01-21 08:00 | Robert | 2h |  |
| 37 | 2.3.6 | Create system-sequence diagrams |  | 2h | 2010-01-25 14:00 | 2010-01-25 16:00 |  | 15.25d |  | start no earlier than 2010-01-25 08:00 | Robert | 2h |  |
| 38 | 2.3.7 | Create activity diagrams |  | 3h | 2010-02-01 14:00 | 2010-02-03 15:00 |  | 12.88d |  | start no earlier than 2010-02-01 08:00 | Robert | 3h | 12 |
| 39 | 2.3.8 | Create state diagrams |  | 3h | 2010-02-01 14:00 | 2010-02-03 15:00 |  | 12.88d |  | start no earlier than 2010-02-01 08:00 | Robert | 3h | 12 |
| 40 | 2.4 | Release #5: Automated Image Gathering | milestone | 0d | 2010-02-04 17:30 | 2010-02-04 17:30 | 23, 28, 31 | 11.75d |  | start no earlier than 2010-02-04 08:00 | Rob; Robert |  |  |
| 42 | 3 | **Iteration 7: Release #6: Automated Composite Image Compilation** |  | 3.5d | 2010-02-04 17:30 | 2010-02-18 08:00 | 22 | 9.38d | 0d |  |  | 25.5h | 16 |
| 43 | 3.1 | **Web system** |  | 1d | 2010-02-04 17:30 | 2010-02-10 15:00 |  | 11.88d |  |  |  | 5h | 16 |
| 44 | 3.1.1 | Install mailing server |  | 1h | 2010-02-04 17:30 | 2010-02-04 18:30 |  | 12.62d |  |  | Rob | 1h |  |
| 45 | 3.1.2 | Implement Oracle PL/SQL procedure to handle email notifications |  | 4h | 2010-02-04 17:30 | 2010-02-10 15:00 |  | 11.88d |  |  | Rob | 4h | 16 |
| 46 | 3.2 | **Telescope-controlling application** |  | 1.12d | 2010-02-04 17:30 | 2010-02-10 15:30 |  | 11.75d |  |  |  | 10.5h | 16 |
| 47 | 3.2.1 | Implement functionality for compiling composite images |  | 4.5h | 2010-02-04 17:30 | 2010-02-10 15:30 | 30 | 11.75d |  |  | Robert | 4.5h | 18 |
| 48 | 3.2.2 | Research image recognition options |  | 3h | 2010-02-04 17:30 | 2010-02-08 16:00 |  | 12.12d |  |  | Rob; Robert | 6h | 12 |
| 49 | 3.3 | **Documentation** |  | 3.5d | 2010-02-04 17:30 | 2010-02-18 08:00 |  | 9.38d |  |  |  | 10h | 16 |
| 50 | 3.3.1 | Update documentation |  | 4h | 2010-02-04 17:30 | 2010-02-10 15:00 |  | 11.88d |  |  | Rob; Robert | 8h | 16 |
| 51 | 3.3.2 | Create sequence diagrams for web application |  | 2h | 2010-02-04 17:30 | 2010-02-08 15:00 |  | 12.38d |  |  | Robert | 2h |  |
| 52 | 3.3.3 | Release #6: Automated Composite Image Compilation | milestone | 0d | 2010-02-18 08:00 | 2010-02-18 08:00 |  | 9.38d |  | start no earlier than 2010-02-18 08:00 | Rob; Robert |  |  |

| ID | WBS | Task | Type | Duration | Start | Finish | Predecessors | Total slack | Free slack | Constraint | Resources | Work | Text1 |
| --- | --- | --- | --- | --- | --- | --- | --- | --- | --- | --- | --- | --- | --- |
| 54 | 4 | **Iteration 8: Release #7: Image Recognition** |  | 4.25d | 2010-02-18 14:30 | 2010-03-04 08:00 | 42 | 7.5d | 0d |  |  | 27h | 16 |
| 55 | 4.1 | **Web system** |  | 0.88d | 2010-02-22 16:00 | 2010-02-25 15:30 |  | 9.38d | 1.88d |  |  | 3.5h | 16 |
| 56 | 4.1.1 | Implement manual telescope positioning |  | 3.5h | 2010-02-22 16:00 | 2010-02-25 15:30 | 61 | 9.38d |  |  | Rob | 3.5h | 14 |
| 57 | 4.2 | **Telescope-controlling application** |  | 2d | 2010-02-18 14:30 | 2010-02-24 16:00 |  | 9.38d | 2.25d |  |  | 15.5h | 16 |
| 58 | 4.2.1 | Implement functionality for image recognition |  | 6h | 2010-02-18 14:30 | 2010-02-22 16:00 |  | 9.75d | 0d |  | Robert | 6h | 24 |
| 59 | 4.2.2 | Integrate image recognition program with telescope-controlling application |  | 1.5h | 2010-02-22 16:00 | 2010-02-24 15:30 | 58 | 9.88d |  |  | Robert | 1.5h |  |
| 60 | 4.2.3 | Create scheduled email job which will email operators when new objects are found |  | 2h | 2010-02-22 16:00 | 2010-02-24 16:00 | 58 | 9.75d |  |  | Rob | 2h |  |
| 61 | 4.2.4 | Implement ability for streaming images live to the web system |  | 6h | 2010-02-18 14:30 | 2010-02-22 16:00 | 30 | 9.38d | 0d |  | Rob | 6h | 24 |
| 62 | 4.3 | **Documentation** |  | 1d | 2010-02-18 14:30 | 2010-02-18 18:30 |  | 10.75d | 3.25d |  |  | 8h | 16 |
| 63 | 4.3.1 | Update documentation |  | 4h | 2010-02-18 14:30 | 2010-02-18 18:30 |  | 10.75d |  |  | Rob; Robert | 8h | 16 |
| 64 | 4.4 | Release #7: Image Recognition | milestone | 0d | 2010-03-04 08:00 | 2010-03-04 08:00 | 55, 57, 62 | 7.5d |  | start no earlier than 2010-03-04 08:00 | Rob; Robert |  |  |
| 66 | 5 | **Iteration 9: Release #8: Refactored Final Release** |  | 12.12d | 2010-03-04 14:30 | 2010-04-07 08:00 | 54 | 0d |  |  |  | 42h | 16 |
| 67 | 5.1 | Final refactoring |  | 5h | 2010-03-04 14:30 | 2010-03-08 15:00 |  | 7.5d | 0d |  | Rob; Robert | 10h | 20 |
| 68 | 5.2 | Changes to schedule log filtering for mobile device views |  | 1h | 2010-03-08 15:00 | 2010-03-08 16:00 | 67 | 7.5d | 0d | start no earlier than 2010-01-28 08:00 | Rob | 1h |  |
| 69 | 5.3 | **Deployment and End Testing** |  | 0.75d | 2010-03-08 16:00 | 2010-03-11 15:00 | 68 | 7.5d | 0d |  |  | 13h | 16 |
| 70 | 5.3.1 | Fix functional tests |  | 3h | 2010-03-08 16:00 | 2010-03-11 15:00 |  | 7.5d |  | start no earlier than 2010-01-07 08:00 | Rob | 3h | 12 |
| 71 | 5.3.2 | System testing |  | 2h | 2010-03-08 16:00 | 2010-03-10 16:00 |  | 7.75d |  |  | Rob; Robert | 4h |  |
| 72 | 5.3.3 | Integration testing |  | 3h | 2010-03-08 16:00 | 2010-03-11 15:00 |  | 7.5d |  |  | Robert | 3h | 12 |
| 73 | 5.3.4 | Final user acceptance test |  | 1h | 2010-03-08 16:00 | 2010-03-10 15:00 |  | 8d |  |  | Rob; Robert | 2h |  |
| 74 | 5.3.5 | Deploy systems to production environment |  | 1h | 2010-03-08 16:00 | 2010-03-10 15:00 |  | 8d |  |  | Rob | 1h |  |
| 75 | 5.4 | **Documentation** |  | 1.75d | 2010-03-11 15:00 | 2010-03-17 15:30 | 69 | 7.5d | 0d |  |  | 13h | 16 |
| 76 | 5.4.1 | Finalize documentation |  | 6h | 2010-03-11 15:00 | 2010-03-15 16:30 |  | 7.5d | 0d |  | Rob; Robert | 12h | 24 |
| 77 | 5.4.2 | Compile final metrics and project statistics |  | 1h | 2010-03-17 14:30 | 2010-03-17 15:30 | 76 | 7.5d |  |  | Robert | 1h |  |
| 78 | 5.5 | **Final Presentation** |  | 8.12d | 2010-03-17 15:30 | 2010-04-07 08:00 | 75 | 0d |  |  |  | 5h | 16 |
| 79 | 5.5.1 | Create PowerPoint for final presentation |  | 2.5h | 2010-03-17 15:30 | 2010-03-18 16:00 |  | 7.5d |  |  | Rob; Robert | 5h | 10 |
| 80 | 5.5.2 | Present project to OC faculty and audience | milestone | 0d | 2010-04-07 08:00 | 2010-04-07 08:00 | 79 | 0d |  | start no earlier than 2010-04-07 08:00 | Rob; Robert |  |  |
| 81 | 5.6 | Final release | milestone | 0d | 2010-04-07 08:00 | 2010-04-07 08:00 | 78, 69, 75 | 0d |  | start no earlier than 2010-03-18 08:00 | Rob; Robert |  |  |
